# Mac Refresh Project

Schedule from GanttProject, 2013-02-11 to 2013-08-02.
Avanti Press
Holidays every year on 01-01, 07-04, 11-11, 11-12, 12-25

## Calendars

- Project calendar: Mon-Fri working; Sat-Sun off. Exceptions (off unless hours are given): 2013-02-18, 2013-05-27.

## Resources

| Resource |
| --- |
| test |

## Schedule

| ID | WBS | Task | Duration | Start | Finish | Predecessors | Complete |
| --- | --- | --- | --- | --- | --- | --- | --- |
| 1 | 1 | **Mac Refresh Project** | 122d | 2013-02-11 | 2013-08-02 |  | 6% |
| 2 | 1.1 | **Planning** | 70d | 2013-02-11 | 2013-05-20 |  | 22% |
| 3 | 1.1.1 | **Project Planning** | 26d | 2013-02-11 | 2013-03-19 |  | 26% |
| 4 | 1.1.1.1 | Complete Project Plan | 6d | 2013-02-11 | 2013-02-19 |  | 100% |
| 5 | 1.1.1.2 | Review Project Plan with IT Manager | 1d | 2013-02-20 | 2013-02-20 | 4 | 100% |
| 6 | 1.1.1.3 | Review updated Project Plan with Systems team | 8d | 2013-02-21 | 2013-03-04 | 5 |  |
| 7 | 1.1.1.4 | Revise Project Plan based on discussion with Systems Team | 4d | 2013-03-05 | 2013-03-08 | 6 |  |
| 8 | 1.1.1.5 | Provide project plan and deployment checklist to department heads of Creative, Design and Production. Establish recurring project plan update frequency. | 1d | 2013-03-08 | 2013-03-08 |  |  |
| 9 | 1.1.1.6 | Once Project Plan approved by IT Manager, create and provide Mac Pros with document that clearly defines where we will need their help to enable them to provide accurate Scope of Work; and provide updated Application List and desired scheduling. | 1d | 2013-03-05 | 2013-03-05 | 6 |  |
| 10 | 1.1.1.7 | Once Project Plan approved by IT Manager, speak to Mac Professionals regarding scheduling | 1d | 2013-03-06 | 2013-03-06 | 9 |  |
| 11 | 1.1.1.8 | Once Mac Professionals hss confirmed scheduling availability, speak with Department heads, see if there is any issue with tentative deployment dates | 1d | 2013-03-11 | 2013-03-11 | 10FS+2d |  |
| 12 | 1.1.1.9 | Request quote and scope of work documentation from Mac Professionals | 1d | 2013-03-12 | 2013-03-12 | 11 |  |
| 13 | 1.1.1.10 | Review quote and scope of work with IT Manager | 1d | 2013-03-13 | 2013-03-13 | 12 |  |
| 14 | 1.1.1.11 | Cut PO and approve quote with Mac Professionals | 1d | 2013-03-14 | 2013-03-14 | 13 |  |
| 15 | 1.1.1.12 | Schedule image development with Mac Pros | 1d | 2013-03-15 | 2013-03-15 | 14 |  |
| 16 | 1.1.1.13 | Divide users into 4 groups | 1d | 2013-03-18 | 2013-03-18 | 15 |  |
| 17 | 1.1.1.14 | Schedule testing with 1-2 users and the department head from each department of Creative, Design and Production | 1d | 2013-03-19 | 2013-03-19 | 16 |  |
| 18 | 1.1.2 | **Software Licensing** | 32d | 2013-02-19 | 2013-04-03 |  | 40% |
| 19 | 1.1.2.1 | Determine # of Mac OS X Mountain Lion Upgrades Needed | 9d | 2013-03-11 | 2013-03-21 | 65 |  |
| 20 | 1.1.2.2 | Determine # of Microsoft Office 2011 licenses needed | 10d | 2013-02-25 | 2013-03-08 |  |  |
| 21 | 1.1.2.3 | Determine # of Centrify DirectControl Licenses Needed | 1d | 2013-02-19 | 2013-02-19 |  | 100% |
| 22 | 1.1.2.4 | Determine # of Adobe CS DS/MC licenses needed | 1d | 2013-02-19 | 2013-02-19 |  | 100% |
| 23 | 1.1.2.5 | Determine # of FileMaker Pro 11 licenses needed | 1d | 2013-02-19 | 2013-02-19 |  | 100% |
| 24 | 1.1.2.6 | Determine # of Sophos Anti-Virus licenses needed | 10d | 2013-02-25 | 2013-03-08 |  |  |
| 25 | 1.1.2.7 | Determine # of Extensis UTS client access licenses needed | 1d | 2013-02-19 | 2013-02-19 |  | 100% |
| 26 | 1.1.2.8 | Determine # of Absolute Manage clients | 10d | 2013-02-25 | 2013-03-08 |  |  |
| 27 | 1.1.2.9 | Determine if we need to purchase any additional licenses for Presence/CUPC/Jabber | 10d | 2013-02-25 | 2013-03-08 |  |  |
| 28 | 1.1.2.10 | Confirm license procurement complete | 9d | 2013-03-22 | 2013-04-03 | 19, 20, 21, 22, 23, 24, 25, 26, 27 |  |

| ID | WBS | Task | Duration | Start | Finish | Predecessors | Complete |
| --- | --- | --- | --- | --- | --- | --- | --- |
| 29 | 1.1.3 | **Software Prerequisites** | 29d | 2013-02-19 | 2013-03-29 |  | 29% |
| 30 | 1.1.3.1 | Determine FTP Client | 1d | 2013-02-19 | 2013-02-19 |  | 100% |
| 31 | 1.1.3.2 | Speak to Lee Land about Photoshop configuration settings for Retouchers vs Art Director -- where is this at? | 1d | 2013-03-11 | 2013-03-11 |  |  |
| 32 | 1.1.3.3 | Determine if any Photoshop Plugins are incompatible with Mountain Lion or if any will need upgrades to be compatible | 1d | 2013-03-11 | 2013-03-11 |  |  |
| 33 | 1.1.3.4 | Determine if Depthstar RIP can still be accessed | 1d | 2013-03-11 | 2013-03-11 |  |  |
| 34 | 1.1.3.5 | Determine if RIP software is compatible (EFI XF) | 1d | 2013-03-11 | 2013-03-11 |  |  |
| 35 | 1.1.3.6 | Determine if RIP software is compatible (Xerox/EFI Fiery Command Workstation) | 1d | 2013-03-11 | 2013-03-11 |  |  |
| 36 | 1.1.3.7 | Determine if NEC ImageExpress will need a new version for Mountain Lion | 1d | 2013-03-11 | 2013-03-11 |  |  |
| 37 | 1.1.3.8 | Determine if Xerox EFI Fiery drivers will need a new version for Mountain Lion | 1d | 2013-03-11 | 2013-03-11 |  |  |
| 38 | 1.1.3.9 | Determine Cisco's recommended version of CUPC/Jabber for Mountain Lion | 1d | 2013-02-27 | 2013-02-27 |  | 100% |
| 39 | 1.1.3.10 | Determine if we will need to upgrade VPN client for Mountain Lion -- Call Cisco, what is version of client that supports Mountain Lion? | 1d | 2013-02-27 | 2013-02-27 |  |  |
| 40 | 1.1.3.11 | When reimaging an existing system to a newer OS & Centrify version, does anything need to be done with the AD user object? Call Centrify. | 1d | 2013-03-11 | 2013-03-11 |  |  |
| 41 | 1.1.3.12 | Rename/Create Centrify zone from test3 to Avanti, move existing users in -- Do we need to create a new zone, or can we just rename the existing one? -- Call Centrify. | 1d | 2013-03-06 | 2013-03-06 |  | 100% |
| 42 | 1.1.3.13 | Designate a single UNIX group for all Avanti mac users, move existing users to this group -- Can this be done without impacting file ownership on the SAN? -- Call Centrify / EMC | 5d | 2013-03-11 | 2013-03-15 | 41FS+2d |  |
| 43 | 1.1.3.14 | Previously Centrify had recommended against using SMB print queues post-version 4.4.0. Is this still the case? If not, how is it implemented? -- Call Centrify | 1d | 2013-03-06 | 2013-03-06 |  | 100% |
| 44 | 1.1.3.15 | If we can't use SMB queues on the version of Centrify going on the image, use LPD instead -- Implement on AVANTI1 / AVANTITY1 / AVANTINY1 and test. | 7d | 2013-03-07 | 2013-03-15 |  | 100% |
| 45 | 1.1.3.16 | Does anything need to be done to enable users to PHD sync when upgrading from Snow Leopard to Mountain Lion? -- Check with Apple / Mac Pros | 5d | 2013-03-11 | 2013-03-15 |  |  |
| 46 | 1.1.3.17 | Does SyncCheck FTP script work on Mountain Lion? Are XML files readable by SyncCheck? | 1d | 2013-02-19 | 2013-02-19 |  | 100% |
| 47 | 1.1.3.18 | Create spreadsheet list of applications, versions and updates to be deployed | 1d | 2013-02-25 | 2013-02-25 |  | 100% |
| 48 | 1.1.3.19 | Create spreadsheet list of settings packages for applications to be deployed | 1d | 2013-02-25 | 2013-02-25 |  | 100% |
| 49 | 1.1.3.20 | NY's Disk Tracker application may not work on Mountain Lion, test. Inform David Laubach and Pete / Liza / Tom Chicoine. | 1d | 2013-03-11 | 2013-03-11 |  |  |
| 50 | 1.1.3.21 | Designate install repository on AVANTI8 for standard and nonstandard software for Mac Refresh | 1d | 2013-02-25 | 2013-02-25 |  | 100% |
| 51 | 1.1.3.22 | Predownload all standard software for deployment and place in install repository | 5d | 2013-03-11 | 2013-03-15 | 50FS+9d |  |
| 52 | 1.1.3.23 | Get list of nonstandard software from all machines using AM | 5d | 2013-03-11 | 2013-03-15 |  |  |
| 53 | 1.1.3.24 | Add nonstandard software to Mac_Image_Planning.xlsx, designate if license deactivation needed, which users' machines it will get installed on | 1d | 2013-03-18 | 2013-03-18 | 52 |  |
| 54 | 1.1.3.25 | Confirm with primary user or responsible party the list of nonstandard software | 4d | 2013-03-19 | 2013-03-22 | 53 |  |
| 55 | 1.1.3.26 | Confirm compatibility of nonstandard software with Mountain Lion; if new version needed, or if not compatible at all. If not compatible, notify user. | 3d | 2013-03-25 | 2013-03-27 | 54 |  |
| 56 | 1.1.3.27 | Determine if we have an installer for a compatible version for each nonstandard software; if not; download and place into repository | 1d | 2013-03-27 | 2013-03-27 | 55FS-1d |  |
| 57 | 1.1.3.28 | Determine installation procedures for nonstandard software | 2d | 2013-03-28 | 2013-03-29 | 56 |  |
| 58 | 1.1.3.29 | What data from standard software on a user's machine will not be transferred automatically (Entourage Tasks, Rules, Signature, Mailing Lists)? | 1d | 2013-03-18 | 2013-03-18 |  |  |
| 59 | 1.1.3.30 | Convey a list of standard software with non-automated data transfer and let them know either how to transfer the data or that the data will need to be reentered | 1d | 2013-03-19 | 2013-03-19 | 58 |  |
| 60 | 1.1.3.31 | Confirm no issues with user for Press Check laptop setup - Tom Chicoine, Lee Land, Pete Pultz | 1d | 2013-03-18 | 2013-03-18 |  |  |

| ID | WBS | Task | Duration | Start | Finish | Predecessors | Complete |
| --- | --- | --- | --- | --- | --- | --- | --- |
| 61 | 1.1.4 | **Hardware Prerequisites** | 48d | 2013-02-19 | 2013-04-25 |  | 16% |
| 62 | 1.1.4.1 | Will AVANTI19 / 29 support Mountain Lion? | 1d | 2013-02-19 | 2013-02-19 |  | 100% |
| 63 | 1.1.4.2 | Generate spreadsheet of all Mac hardware specs: CPU Cores, CPU GHz, Processor, Memory, Memory Type, HD Size, Scratch Disk Size, Display Model, Display Size | 1d | 2013-02-22 | 2013-02-22 |  | 100% |
| 64 | 1.1.4.3 | Review Mac hardware spread sheet with IT manager to revise standard hardware specs, determine test specs for Photoshop class machines | 1d | 2013-02-22 | 2013-02-22 | 63FS-1d | 100% |
| 65 | 1.1.4.4 | Determine with Mac Pros what machines will need upgrades -- Send updated list of Macs | 1d | 2013-03-08 | 2013-03-08 | 64FS+9d |  |
| 66 | 1.1.4.5 | Order test hardware for Photoshop class machines | 1d | 2013-03-05 | 2013-03-05 |  | 100% |
| 67 | 1.1.4.6 | Once hardware received; install in test Mac Pro | 1d | 2013-03-18 | 2013-03-18 |  |  |
| 68 | 1.1.4.7 | Prep test Mac Pro for use - Install standard software manually, configure manually | 1d | 2013-03-18 | 2013-03-18 | 67FS-1d |  |
| 69 | 1.1.4.8 | Photoshop class test user performs test. Based on Photoshop class machine test, revise or confirm Mac hardware specs | 9d | 2013-03-19 | 2013-03-29 | 68 |  |
| 70 | 1.1.4.9 | Determine with Mac Pros what machines will need upgrades -- Send updated list of Macs | 1d | 2013-04-01 | 2013-04-01 |  |  |
| 71 | 1.1.4.10 | What existing hardware that is not being used can we use to upgrade outdated Macs? | 1d | 2013-02-22 | 2013-02-22 |  | 100% |
| 72 | 1.1.4.11 | Determine 1 desktop and 1 laptop that will be replaced; order these first so we have machines to test on | 1d | 2013-03-22 | 2013-03-22 | 65FS+9d |  |
| 73 | 1.1.4.12 | Create spreadsheet of machine upgrades and accessories needing to be purchased | 1d | 2013-03-11 | 2013-03-11 | 65, 71 | 100% |
| 74 | 1.1.4.13 | Put together quote request for systems, accessories and licenses necessary for upgrades and send to Mac Pros (Displays, Mice, Keyboards, BookEndz, Tablets, Scratch Disks, 32 GB memory for retouchers and color specialists, 16 GB for designers, AppleCare, extra power supplies, (Mini) DisplayPort to DVI, Thunderbolt to Ethernet), also spare mac laptop and spare mac desktop | 11d | 2013-03-20 | 2013-04-03 | 73FS+6d |  |
| 75 | 1.1.4.14 | Designate temporary area in server room for decommissioned systems / accessories | 1d | 2013-02-26 | 2013-02-26 |  | 100% |
| 76 | 1.1.4.15 | Place order with Mac Professionals | 2d | 2013-04-04 | 2013-04-05 | 74 |  |
| 77 | 1.1.4.16 | Designate storage area in server room for new hardware | 1d | 2013-02-26 | 2013-02-26 |  | 100% |
| 78 | 1.1.4.17 | Clean up server room to maximize space for received/decommissioned items | 11d | 2013-03-18 | 2013-04-01 |  |  |
| 79 | 1.1.4.18 | Confirm all items received | 1d | 2013-04-24 | 2013-04-24 | 76FS+12d |  |
| 80 | 1.1.4.19 | Confirm all systems and attached displays entered into AppleCare | 1d | 2013-04-25 | 2013-04-25 | 79 |  |
| 81 | 1.1.5 | **Notable Dates** | 57d | 2013-03-01 | 2013-05-20 |  |  |
| 82 | 1.1.5.1 | Shane Vacation | 6d | 2013-03-01 | 2013-03-08 |  |  |
| 83 | 1.1.5.2 | Erik Vacation | 6d | 2013-04-26 | 2013-05-03 |  |  |
| 84 | 1.1.5.3 | Stan Vacation | 3d | 2013-05-16 | 2013-05-20 |  |  |

| ID | WBS | Task | Duration | Start | Finish | Predecessors | Complete |
| --- | --- | --- | --- | --- | --- | --- | --- |
| 85 | 1.2 | **Image Development** | 36d | 2013-03-05 | 2013-04-23 |  | 4% |
| 86 | 1.2.1 | **Deployment / Update Server Setup (AVANTI19)** | 30d | 2013-03-05 | 2013-04-15 |  | 11% |
| 87 | 1.2.1.1 | Move master distribution point for Absolute Manage to AVANTI29 prior to AVANTI19 upgrade, get approval from IT Manager | 1d | 2013-03-05 | 2013-03-05 |  | 100% |
| 88 | 1.2.1.2 | Set up SUS on AVANTI29 prior to AVANTI19 upgrade | 1d | 2013-03-05 | 2013-03-05 |  | 100% |
| 89 | 1.2.1.3 | Setup AAMEE on AVANTI29 prior to AVANTI19 upgrade | 1d | 2013-03-11 | 2013-03-11 |  |  |
| 90 | 1.2.1.4 | Create Centrify test group policy to point updates to AVANTI29 | 1d | 2013-03-15 | 2013-03-15 | 87FS+7d, 88 |  |
| 91 | 1.2.1.5 | Test group policy on DTDE00160 -- Can it see updates, can it download updates, can it apply updates? | 1d | 2013-03-18 | 2013-03-18 | 90 |  |
| 92 | 1.2.1.6 | Create disk image backups of both AVANTI19 volumes prior to upgrade | 1d | 2013-03-14 | 2013-03-14 |  |  |
| 93 | 1.2.1.7 | Make old images available on AVANTI8 for manual imaging using bootable OS X CD & external HD, if necessary | 1d | 2013-03-15 | 2013-03-15 |  |  |
| 94 | 1.2.1.8 | Work with Mac Pros to configure and set up Mountain Lion server for image deployment and SUS, document process. | 1d | 2013-04-15 | 2013-04-15 | 91FS+19d, 92, 93 |  |
| 95 | 1.2.1.9 | Create and test netboot image for Snow Leopard | 1d | 2013-04-15 | 2013-04-15 | 94FS-1d |  |
| 96 | 1.2.1.10 | Create and test netboot image for Mountain Lion | 1d | 2013-04-15 | 2013-04-15 | 94FS-1d |  |
| 97 | 1.2.1.11 | Create and test a simple test image for Mountain Lion (create image of base OS using DeployStudio, create a test deployment .pkg and a test script, attempt to deploy) | 1d | 2013-04-15 | 2013-04-15 | 96FS-1d |  |
| 98 | 1.2.1.12 | Test deployment of a preexisting Snow Leopard image | 1d | 2013-04-15 | 2013-04-15 | 95FS-1d |  |
| 99 | 1.2.1.13 | Modify Systems' machines' group policy to point to Mountain Lion server for updates, for testing | 1d | 2013-04-15 | 2013-04-15 | 94FS-1d |  |
| 100 | 1.2.1.14 | Test deployment of updates to Systems machines using Absolute Manage | 1d | 2013-04-15 | 2013-04-15 | 99FS-1d |  |
| 101 | 1.2.1.15 | Modify test policy for DTDE0160 to point to Mountain Lion server for updates | 1d | 2013-04-15 | 2013-04-15 | 94FS-1d, 100FS-1d |  |
| 102 | 1.2.1.16 | Test group policy on DTDE00160 -- Can it see updates, can it download updates, can it apply updates? | 1d | 2013-04-15 | 2013-04-15 | 101FS-1d |  |
| 103 | 1.2.1.17 | Modify all users' machines' group policy to point to Mountain Lion server for updates | 1d | 2013-04-15 | 2013-04-15 | 102FS-1d |  |
| 104 | 1.2.2 | **Group Policy Setup / Planning** | 4d | 2013-03-11 | 2013-03-14 |  |  |
| 105 | 1.2.2.1 | Create spreadsheet to track preexisting and new group policies | 1d | 2013-03-11 | 2013-03-11 |  |  |
| 106 | 1.2.2.2 | Can we upgrade console on AVANTI2 to 5.1 without impacting 4.4.0 clients? Call Centrify. | 1d | 2013-03-11 | 2013-03-11 |  |  |
| 107 | 1.2.2.3 | Remove Centrify 4.4.0 Console from AVANTI2, install Centrify 5.1 console | 1d | 2013-03-11 | 2013-03-11 |  |  |
| 108 | 1.2.2.4 | Install new Centrify Client (5.1) on Systems Macs for test -- Confirm 'password expiration bug' is resolved | 1d | 2013-03-11 | 2013-03-11 |  |  |
| 109 | 1.2.2.5 | Examine existing group policies. Are there any settings we would want to change? | 1d | 2013-03-12 | 2013-03-12 | 105 |  |
| 110 | 1.2.2.6 | Determine new group policies since DirectControl 4.4.0. Are there any new policies we would want to make use of? | 1d | 2013-03-13 | 2013-03-13 | 109 |  |
| 111 | 1.2.2.7 | Once group policies updated; test all policies being applied and make sure it is working properly | 1d | 2013-03-14 | 2013-03-14 | 110 |  |

| ID | WBS | Task | Duration | Start | Finish | Predecessors | Complete |
| --- | --- | --- | --- | --- | --- | --- | --- |
| 112 | 1.2.3 | **OS and Application Settings Planning** | 16d | 2013-03-15 | 2013-04-05 |  |  |
| 113 | 1.2.3.1 | Create spreadsheet list of issues and individual settings for applications | 1d | 2013-03-15 | 2013-03-15 |  | 100% |
| 114 | 1.2.3.2 | Determine standard settings for Mac OS X and Mac OS X standard apps, and their deployment method | 10d | 2013-03-18 | 2013-03-29 | 113 |  |
| 115 | 1.2.3.3 | Determine standard settings for Microsoft Outlook 2011, and their deployment method | 10d | 2013-03-18 | 2013-03-29 | 113 |  |
| 116 | 1.2.3.4 | Determine standard settings for Microsoft Excel 2011, and their deployment method | 10d | 2013-03-18 | 2013-03-29 | 113 |  |
| 117 | 1.2.3.5 | Determine standard settings for Microsoft Word 2011, and their deployment method | 10d | 2013-03-18 | 2013-03-29 | 113 |  |
| 118 | 1.2.3.6 | Determine standard settings for Microsoft Powerpoint 2011, and their deployment method | 10d | 2013-03-18 | 2013-03-29 | 113 |  |
| 119 | 1.2.3.7 | Determine standard settings for Safari, and their deployment method | 10d | 2013-03-18 | 2013-03-29 | 113 |  |
| 120 | 1.2.3.8 | Determine standard settings for FileMaker Pro 11, and their deployment method | 10d | 2013-03-18 | 2013-03-29 | 113 |  |
| 121 | 1.2.3.9 | Determine standard settings for FileZilla, and their deployment method | 10d | 2013-03-18 | 2013-03-29 | 113 |  |
| 122 | 1.2.3.10 | Determine standard settings 9edge / Terminal, and their deployment method | 10d | 2013-03-18 | 2013-03-29 | 113 |  |
| 123 | 1.2.3.11 | Determine standard settings for Centrify DirectControl, and their deployment method | 10d | 2013-03-18 | 2013-03-29 | 113 |  |
| 124 | 1.2.3.12 | Determine if standard settings for Photoshop CS6 / other CS6 apps can be deployed | 1d | 2013-03-18 | 2013-03-18 | 113 |  |
| 125 | 1.2.3.13 | Determine standard settings for CUPC/Jabber, and their deployment method | 10d | 2013-03-18 | 2013-03-29 | 113 |  |
| 126 | 1.2.3.14 | Determine standard settings for Sophos Anti-virus, and their deployment method | 10d | 2013-03-18 | 2013-03-29 | 113 |  |
| 127 | 1.2.3.15 | Determine standard settings for Universal Type Client, and their deployment method | 10d | 2013-03-18 | 2013-03-29 | 113 |  |
| 128 | 1.2.3.16 | Determine standard settings for Absolute Manage Client, and their deployment method | 10d | 2013-03-18 | 2013-03-29 | 113 |  |
| 129 | 1.2.3.17 | Determine standard settings for i1Profiler, and their deployment method | 10d | 2013-03-18 | 2013-03-29 | 113 |  |
| 130 | 1.2.3.18 | Determine standard settings for VPN Client, and their deployment method | 10d | 2013-03-18 | 2013-03-29 | 113 |  |
| 131 | 1.2.3.19 | Determine standard settings for NEC ImageDirect, and their deployment method | 10d | 2013-03-18 | 2013-03-29 | 113 |  |
| 132 | 1.2.3.20 | Determine standard settings for Wacom Tablet Driver, and their deployment method | 10d | 2013-03-18 | 2013-03-29 | 113 |  |
| 133 | 1.2.3.21 | Determine standard settings for all print drivers -- Bizhub 501, C353, Xerox, Epson, HPLJ4700, HPLJ4200, Training Room, and their deployment method | 10d | 2013-03-18 | 2013-03-29 | 113 |  |
| 134 | 1.2.3.22 | Determine settings to disable updates and administrative functionality for all 3rd party apps, and their deployment method | 10d | 2013-03-18 | 2013-03-29 | 113 |  |
| 135 | 1.2.3.23 | Determine any desktop-specific settings, and their deployment method | 10d | 2013-03-18 | 2013-03-29 | 113 |  |
| 136 | 1.2.3.24 | Determine any laptop-specific settings, and their deployment method | 10d | 2013-03-18 | 2013-03-29 | 113 |  |
| 137 | 1.2.3.25 | Confirm settings are appropriate with Systems | 1d | 2013-04-01 | 2013-04-01 | 114, 115, 116, 117, 118, 119, 120, 121, 122, 123, 124, 125, 126, 127, 128, 129, 130, 131, 132, 133, 134, 135, 136, 139 |  |
| 138 | 1.2.3.26 | Confirm standard settings for Alpha Config for OS and Applications complete - All settings/issues resolved or deferred in spreadsheet. | 4d | 2013-04-02 | 2013-04-05 | 137 |  |
| 139 | 1.2.3.27 | Confirm how to prevent old settings from transferring / being synced | 10d | 2013-03-18 | 2013-03-29 | 113 |  |

| ID | WBS | Task | Duration | Start | Finish | Predecessors |
| --- | --- | --- | --- | --- | --- | --- |
| 140 | 1.2.4 | **Image and Process Creation** | 6d | 2013-04-16 | 2013-04-23 | 112 |
| 141 | 1.2.4.1 | Create Post Image Configuration document; any changes that must be implemented manually post-deployment of image, apps and settings should be included/logged. | 1d | 2013-04-16 | 2013-04-16 |  |
| 142 | 1.2.4.2 | Work with Mac Pros to design standard base image for laptop and desktop | 4d | 2013-04-16 | 2013-04-19 | 141FS-1d |
| 143 | 1.2.4.3 | Work with Mac Pros to create deployment packages for applications and settings | 3d | 2013-04-16 | 2013-04-18 |  |
| 144 | 1.2.4.4 | Work with Mac Pros to create deployment packages for all printers and determined settings -- Bizhub 501, C353, Xerox, Epson, HPLJ4700, HPLJ4200, Training Room | 2d | 2013-04-16 | 2013-04-17 |  |
| 145 | 1.2.4.5 | Determine standard process for image deployment to existing machines with preexisting users; document it | 1d | 2013-04-19 | 2013-04-19 | 142FS-1d, 143FS-1d, 144FS-1d |
| 146 | 1.2.4.6 | Determine standard process for image deployment to new machines with preexisting users; document it | 1d | 2013-04-19 | 2013-04-19 | 145FS-1d |
| 147 | 1.2.4.7 | Determine standard process for image deployment to machines with new users, document it | 1d | 2013-04-19 | 2013-04-19 | 146FS-1d |
| 148 | 1.2.4.8 | Determine OS / Application update process for updated configuration, if there are any changes | 1d | 2013-04-23 | 2013-04-23 |  |
| 149 | 1.2.4.9 | Determine process to update images and deployment packages going forward, document it | 1d | 2013-04-23 | 2013-04-23 |  |
| 150 | 1.2.4.10 | Determine standard process for purchasing machines, document it | 1d | 2013-04-23 | 2013-04-23 |  |
| 151 | 1.2.4.11 | Determine standard process for decommissioning machines, document it | 1d | 2013-04-23 | 2013-04-23 |  |
| 152 | 1.3 | **Image Testing** | 25d | 2013-04-22 | 2013-05-24 | 85FS-2d |
| 153 | 1.3.1 | Design test process/checklist; cover both new user installs and existing user installs | 1d | 2013-04-22 | 2013-04-22 |  |
| 154 | 1.3.2 | Deploy draft image(s) to test desktop and laptop machines | 1d | 2013-04-23 | 2013-04-23 | 153 |
| 155 | 1.3.3 | Perform deployment process (existing machine, existing user) and complete test process/checklist | 1d | 2013-04-23 | 2013-04-23 |  |
| 156 | 1.3.4 | Perform deployment process (new machine, existing user) and complete test process/checklist | 1d | 2013-04-23 | 2013-04-23 |  |
| 157 | 1.3.5 | Perform deployment process (new machine, new user) and complete test process/checklist | 1d | 2013-04-23 | 2013-04-23 |  |
| 158 | 1.3.6 | Deploy draft image(s) to one or more Systems users, perform deployment process, complete test process/checklist | 1d | 2013-04-24 | 2013-04-24 |  |
| 159 | 1.3.7 | Work with Mac Pros to implement necessary changes to image / deployment packages determined from Alpha configuration testing | 1d | 2013-05-06 | 2013-05-06 | 154FS+7d, 155FS+7d, 156FS+7d, 157FS+7d, 158FS+7d |
| 160 | 1.3.8 | Create Beta configuration based on changes, update spreadsheet | 1d | 2013-05-06 | 2013-05-06 | 159FS-1d |
| 161 | 1.3.9 | Deploy Beta configuration to 1-2 users from each department of Creative, Design and Production, following deployment process and completing test process/checklist. Users test. | 9d | 2013-05-07 | 2013-05-17 | 160 |
| 162 | 1.3.10 | Work with Mac Pros to implement necessary changes to image / deployment packages determined from Beta configuration testing | 1d | 2013-05-20 | 2013-05-20 | 161 |
| 163 | 1.3.11 | Create Release/Production configuration based on changes, update spreadsheet | 1d | 2013-05-20 | 2013-05-20 | 162FS-1d |
| 164 | 1.3.12 | Reimage Beta configuration machines with Release/Production configuration, and perform final test, following deployment process and completing test process/checklist | 3d | 2013-05-21 | 2013-05-23 | 163 |
| 165 | 1.3.13 | Confirm image testing is complete; and all issues/settings changes in spreadsheet have been either resolved or deferred before proceeding to Image Deployment. | 1d | 2013-05-24 | 2013-05-24 | 164 |

| ID | WBS | Task | Duration | Start | Finish | Predecessors |
| --- | --- | --- | --- | --- | --- | --- |
| 166 | 1.4 | **Image Deployment and Training** | 73d | 2013-04-01 | 2013-07-12 |  |
| 167 | 1.4.1 | Create training materials for Office 2011 | 1d | 2013-04-01 | 2013-04-01 | 115, 116, 117, 118 |
| 168 | 1.4.2 | Create training materials for Mac OS X 10.8 | 1d | 2013-04-02 | 2013-04-02 | 114FS+1d |
| 169 | 1.4.3 | Create training materials for CUPC / Jabber (if updated) | 1d | 2013-04-03 | 2013-04-03 | 125FS+2d |
| 170 | 1.4.4 | Create training materials for VPN client (if updated) | 1d | 2013-04-03 | 2013-04-03 | 130FS+2d |
| 171 | 1.4.5 | Scheduled training and deployment for Group 1 users; confirmed with dept. heads | 1d | 2013-04-08 | 2013-04-08 |  |
| 172 | 1.4.6 | "Information" section in Mac Refresh Deployment Checklist completed for Group 1 | 1d | 2013-04-08 | 2013-04-08 |  |
| 173 | 1.4.7 | Scheduled training and deployment for Group 2 users; confirmed with dept. heads | 1d | 2013-04-08 | 2013-04-08 |  |
| 174 | 1.4.8 | "Information" section in Mac Refresh Deployment Checklist completed for Group 2 | 1d | 2013-04-08 | 2013-04-08 |  |
| 175 | 1.4.9 | Scheduled training and deployment for Group 3 users; confirmed with dept heads | 1d | 2013-04-08 | 2013-04-08 |  |
| 176 | 1.4.10 | "Information" section in Mac Refresh Deployment Checklist completed for Group 3 | 1d | 2013-04-08 | 2013-04-08 |  |
| 177 | 1.4.11 | Scheduled training and deployment for Group 4 users; confirmed with dept. heads | 1d | 2013-04-08 | 2013-04-08 |  |
| 178 | 1.4.12 | "Information" section in Mac Refresh Deployment Checklist completed for Group 4 | 1d | 2013-04-08 | 2013-04-08 |  |
| 179 | 1.4.13 | Schedule flight and hotel stay for Systems in NY | 1d | 2013-04-08 | 2013-04-08 |  |
| 180 | 1.4.14 | Shipping manifest created for NY hardware upgrades, replacement machines, and replacement accessories | 1d | 2013-04-08 | 2013-04-08 |  |
| 181 | 1.4.15 | Shipped NY hardware upgrades, replacement machines and replacement accessories to NY | 7d | 2013-06-20 | 2013-06-28 |  |
| 182 | 1.4.16 | Confirmed NY received all items listed on shipping manifest | 3d | 2013-07-01 | 2013-07-03 |  |
| 183 | 1.4.17 | Schedule use of training room on training dates | 1d | 2013-04-08 | 2013-04-08 | 167FS+2d, 168FS+2d, 169FS+2d, 170FS+2d |
| 184 | 1.4.18 | Group 1 replacement machines base configuration deployed | 1d | 2013-05-31 | 2013-05-31 |  |
| 185 | 1.4.19 | Group 1 trained | 1d | 2013-05-31 | 2013-05-31 |  |
| 186 | 1.4.20 | Group 1 deployed ("Deployment" and "Turnover to User" sections in Mac Refresh Deployment Checklist completed) | 2d | 2013-05-31 | 2013-06-03 |  |
| 187 | 1.4.21 | Group 2 replacement machines base configuration deployed | 1d | 2013-06-07 | 2013-06-07 |  |
| 188 | 1.4.22 | Group 2 trained | 1d | 2013-06-10 | 2013-06-10 |  |
| 189 | 1.4.23 | Group 2 deployed ("Deployment" and "Turnover to User" sections in Mac Refresh Deployment Checklist completed) | 2d | 2013-06-10 | 2013-06-11 |  |
| 190 | 1.4.24 | Group 3 replacement machines base configuration deployed | 1d | 2013-06-14 | 2013-06-14 |  |
| 191 | 1.4.25 | Group 3 trained | 1d | 2013-06-17 | 2013-06-17 |  |
| 192 | 1.4.26 | Group 3 deployed ("Deployment" and "Turnover to User" sections in Mac Refresh Deployment Checklist completed) | 2d | 2013-06-17 | 2013-06-18 |  |
| 193 | 1.4.27 | Group 4 replacement machines base configuration deployed | 1d | 2013-06-19 | 2013-06-19 |  |
| 194 | 1.4.28 | Group 4 trained | 1d | 2013-07-08 | 2013-07-08 |  |
| 195 | 1.4.29 | Group 4 deployed ("Deployment" and "Turnover to User" sections in Mac Refresh Deployment Checklist completed) | 2d | 2013-07-08 | 2013-07-09 |  |
| 196 | 1.4.30 | Multiuser workstations deployed | 4d | 2013-07-09 | 2013-07-12 |  |
| 197 | 1.4.31 | Package up and ship decommissioned items back to Detroit | 4d | 2013-07-09 | 2013-07-12 |  |

| ID | WBS | Task | Duration | Start | Finish |
| --- | --- | --- | --- | --- | --- |
| 198 | 1.5 | **Cleanup / Close** | 15d | 2013-07-15 | 2013-08-02 |
| 199 | 1.5.1 | Move decommissioned machines / accessories to 5th floor | 5d | 2013-07-15 | 2013-07-19 |
| 200 | 1.5.2 | Determine # of hard drives / laptops / desktops that need to be destroyed | 5d | 2013-07-15 | 2013-07-19 |
| 201 | 1.5.3 | Schedule GEEP pickup of 5th floor items | 5d | 2013-07-15 | 2013-07-19 |
| 202 | 1.5.4 | GEEP picks up all 5th floor items | 1d | 2013-07-22 | 2013-07-22 |
| 203 | 1.5.5 | Confirm # of hard drives / laptops /desktops destroyed with GEEP | 9d | 2013-07-23 | 2013-08-02 |
| 204 | 1.5.6 | Schedule other systems personnel attempt to deploy the next new machine, to test process and documentation clarity | 1d | 2013-07-15 | 2013-07-15 |
| 205 | 1.5.7 | Schedule other systems personnel attempt to update the image, to test process and documentation clarity | 1d | 2013-07-15 | 2013-07-15 |
| 206 | 1.5.8 | Schedule other systems personnel attempt to update the application and settings deployment, to test process and documentation clarity | 1d | 2013-07-15 | 2013-07-15 |
